# Day_App开发

Schedule from MS Project, 2020-09-29 to 2021-01-19, A marks actual dates.

## Calendars

- Standard: Mon-Fri 08:00-12:00, 13:00-17:00; Sat-Sun off. Exceptions (off unless hours are given): 2020-09-29 to 2021-01-05 08:00-12:00, 13:00-17:00 (工作日, recurring).

## Schedule

| ID | WBS | Task | Type | Duration | Start | Finish | Predecessors | Complete | Remaining | Total slack | Constraint | 负责人 |
| --- | --- | --- | --- | --- | --- | --- | --- | --- | --- | --- | --- | --- |
| 1 | 1 | **项目计划设计** |  | 28d | 2020-09-29 A | 2020-10-26 |  | 87% | 3.61d |  |  | 陈玲曦、刘书宇、童峻涛 |
| 2 | 1.1 | **前期准备** |  | 8d | 2020-09-29 A | 2020-10-06 A |  | 100% |  |  |  | 陈玲曦、刘书宇、童峻涛 |
| 3 | 1.1.1 | 制定项目内容 |  | 2d | 2020-09-29 A | 2020-09-30 A |  | 100% |  |  |  | 陈玲曦、刘书宇、童峻涛 |
| 4 | 1.1.2 | 需求调研 |  | 2d | 2020-10-01 A | 2020-10-02 A | 3 | 100% |  |  | finish no earlier than 2020-10-03 | 陈玲曦、刘书宇、童峻涛 |
| 5 | 1.1.3 | 配置工具学习 | manual | 1d | 2020-10-02 A | 2020-10-02 A |  | 100% |  |  |  | 陈玲曦、刘书宇、童峻涛 |
| 6 | 1.1.4 | 技术调研 |  | 2d | 2020-10-03 A | 2020-10-06 A | 3 | 100% |  |  |  | 童峻涛 |
| 7 | 1.2 | 项目介绍ppt制作 |  | 2d | 2020-10-07 A | 2020-10-08 A | 2 | 100% |  |  |  | 陈玲曦、刘书宇、童峻涛 |
| 8 | 1.3 | **基础知识学习（Ⅰ ）** |  | 12d | 2020-10-07 A | 2020-10-18 | 6 | 80% | 2.4d |  |  | 陈玲曦、刘书宇、童峻涛 |
| 9 | 1.3.1 | **Android基础知识学习（I）** |  | 12d | 2020-10-07 A | 2020-10-18 |  | 80% | 2.4d |  |  | 刘书宇 |
| 10 | 1.3.1.1 | Android基础知识学习第一阶段(UI体系) |  | 3d | 2020-10-07 A | 2020-10-09 |  | 80% | 0.6d | 94d |  | 刘书宇 |
| 11 | 1.3.1.2 | Android基础知识学习第二阶段(底层存储等) |  | 3d | 2020-10-10 A | 2020-10-12 |  | 80% | 0.6d | 91d |  | 刘书宇 |
| 12 | 1.3.1.3 | Android基础知识学习第三阶段(消息控件等) |  | 3d | 2020-10-13 A | 2020-10-15 |  | 80% | 0.6d | 88d |  | 刘书宇 |
| 13 | 1.3.1.4 | Android基础知识学习第四阶段(安全机制等) |  | 3d | 2020-10-16 A | 2020-10-18 |  | 80% | 0.6d | 85d |  | 刘书宇 |
| 14 | 1.3.2 | **原型设计学习** |  | 12d | 2020-10-07 A | 2020-10-18 |  | 80% | 2.4d |  |  | 陈玲曦 |
| 15 | 1.3.2.1 | 原型设计学习第一阶段(理论学习) |  | 3d | 2020-10-07 A | 2020-10-09 |  | 80% | 0.6d | 98d | finish no earlier than 2020-10-09 | 陈玲曦 |
| 16 | 1.3.2.2 | 原型设计学习第二阶段(工具学习) |  | 3d | 2020-10-10 A | 2020-10-12 |  | 80% | 0.6d | 95d | finish no earlier than 2020-10-12 | 陈玲曦 |
| 17 | 1.3.2.3 | 原型设计学习第三阶段(设计基础结构) |  | 3d | 2020-10-13 A | 2020-10-15 |  | 80% | 0.6d | 92d | finish no earlier than 2020-10-15 | 陈玲曦 |
| 18 | 1.3.2.4 | 原型设计学习第四阶段(修改完善) |  | 3d | 2020-10-16 A | 2020-10-18 |  | 80% | 0.6d | 89d | finish no earlier than 2020-10-18 | 陈玲曦 |
| 19 | 1.3.3 | **Spring框架学习（I)** |  | 12d | 2020-10-07 A | 2020-10-18 |  | 80% | 2.4d | 85d |  | 童峻涛 |
| 20 | 1.3.3.1 | Spring框架学习第一阶段(理论学习) |  | 3d | 2020-10-07 A | 2020-10-09 |  | 80% | 0.6d | 94d | finish no earlier than 2020-10-09 | 童峻涛 |
| 21 | 1.3.3.2 | Spring框架学习第二阶段(模块学习) |  | 3d | 2020-10-10 A | 2020-10-12 |  | 80% | 0.6d | 91d | finish no earlier than 2020-10-12 | 童峻涛 |
| 22 | 1.3.3.3 | Spring框架学习第三阶段(基础框架设计) |  | 3d | 2020-10-13 A | 2020-10-15 |  | 80% | 0.6d | 88d | finish no earlier than 2020-10-15 | 童峻涛 |
| 23 | 1.3.3.4 | Spring框架学习第四阶段(基础框架修订) |  | 3d | 2020-10-16 A | 2020-10-18 |  | 80% | 0.6d | 85d | finish no earlier than 2020-10-18 | 童峻涛 |
| 24 | 1.4 | 本周小组会议 | manual | 0.1d | 2020-10-13 A | 2020-10-13 A |  | 100% |  |  |  | 陈玲曦、刘书宇、童峻涛 |
| 25 | 1.5 | 本周小组会议 | manual | 0.1d | 2020-10-19 A | 2020-10-19 A |  | 100% |  |  |  | 陈玲曦、刘书宇、童峻涛 |
| 26 | 1.6 | 本周小组会议 | manual | 0.1d | 2020-10-21 A | 2020-10-21 A |  | 100% |  |  |  | 陈玲曦、刘书宇、童峻涛 |
| 27 | 1.7 | 项目介绍ppt修改 |  | 3d | 2020-10-21 A | 2020-10-23 A | 7 | 100% |  |  |  | 陈玲曦、刘书宇、童峻涛 |
| 28 | 1.8 | 项目计划书制作 |  | 3d | 2020-10-21 A | 2020-10-23 A | 2, 8 | 100% |  |  |  | 童峻涛、刘书宇 |
| 29 | 1.9 | 原型初步制作 |  | 3d | 2020-10-22 A | 2020-10-24 A | 14 | 100% |  |  |  | 陈玲曦 |
| 30 | 1.10 | logo制作 |  | 0.5d | 2020-10-23 A | 2020-10-23 A | 14 | 100% |  |  |  | 陈玲曦 |
| 31 | 1.11 | 项目计划ppt制作 |  | 1d | 2020-10-24 A | 2020-10-26 A | 27, 28, 29, 30 | 100% |  |  |  | 陈玲曦 |

Notes:
- 1: 这是摘要任务。使用摘要任务以帮助您在节中组织项目。

| ID | WBS | Task | Type | Duration | Start | Finish | Predecessors | Complete | Actual start | Constraint | 负责人 |
| --- | --- | --- | --- | --- | --- | --- | --- | --- | --- | --- | --- |
| 32 | 2 | **可行性分析** |  | 9d | 2020-10-26 A | 2020-11-03 A | 1 | 100% |  |  | 陈玲曦、刘书宇、童峻涛 |
| 33 | 2.1 | 本周小组会议 | manual | 0.1d | 2020-10-26 A | 2020-10-26 A |  | 100% |  |  | 陈玲曦、刘书宇、童峻涛 |
| 34 | 2.2 | 经济可行性分析 |  | 2d | 2020-10-26 A | 2020-10-27 A | 2 | 100% |  |  | 陈玲曦 |
| 35 | 2.3 | 操作可行性分析 |  | 2d | 2020-10-26 A | 2020-10-27 A | 2 | 100% |  |  | 童峻涛 |
| 36 | 2.4 | **基础知识学习（Ⅱ）** |  | 6d | 2020-10-26 A | 2020-10-31 A | 8 | 100% |  |  | 陈玲曦、刘书宇、童峻涛 |
| 37 | 2.4.1 | **Android基础知识学习（II）** |  | 6d | 2020-10-26 A | 2020-10-31 A | 9 | 100% |  |  | 刘书宇 |
| 38 | 2.4.1.1 | Android基础知识学习第一阶段(activity学习) |  | 3d | 2020-10-26 A | 2020-10-28 A | 9 | 100% |  |  | 刘书宇 |
| 39 | 2.4.1.2 | Android基础知识学习第二阶段(service学习) |  | 3d | 2020-10-29 A | 2020-10-31 A | 9 | 100% |  | start no earlier than 2020-10-29 | 刘书宇 |
| 40 | 2.4.2 | **原型学习并制作** |  | 6d | 2020-10-26 A | 2020-10-31 A | 14 | 100% |  |  | 陈玲曦 |
| 41 | 2.4.2.1 | 原型学习并制作第一阶段(流程优化) |  | 3d | 2020-10-26 A | 2020-10-28 A | 14 | 100% |  |  | 陈玲曦 |
| 42 | 2.4.2.2 | 原型学习并制作第二阶段(二次完善) |  | 3d | 2020-10-29 A | 2020-10-31 A | 14 | 100% |  |  | 陈玲曦 |
| 43 | 2.4.3 | **Spring框架学习（II）** |  | 6d | 2020-10-26 A | 2020-10-31 A | 19 | 100% |  |  | 童峻涛 |
| 44 | 2.4.3.1 | Spring框架学习第一阶段(注入方式) |  | 3d | 2020-10-26 A | 2020-10-28 A | 19 | 100% |  |  | 童峻涛 |
| 45 | 2.4.3.2 | Spring框架学习第二阶段(spring整合jdbc等) |  | 3d | 2020-10-29 A | 2020-10-31 A | 19 | 100% |  | start no earlier than 2020-10-29 | 童峻涛 |
| 46 | 2.5 | 技术可行性分析 |  | 3d | 2020-10-27 A | 2020-10-29 A | 2 | 100% |  |  | 童峻涛 |
| 47 | 2.6 | 可行性分析报告编写 | milestone, manual | 3d | 2020-10-31 A | 2020-11-03 A | 34, 35, 46 | 100% |  |  | 陈玲曦、刘书宇、童峻涛 |
| 48 | 3 | **需求详细说明** |  | 11d | 2020-11-03 | 2020-11-13 A | 32 | 100% | 2020-10-30 |  | 陈玲曦、刘书宇、童峻涛 |
| 49 | 3.1 | 每周例会，技术分享 | manual | 0.5d | 2020-11-03 A | 2020-11-03 A |  | 100% |  |  | 陈玲曦、刘书宇、童峻涛 |
| 50 | 3.2 | 需求说明文档制作 |  | 3d | 2020-11-03 A | 2020-11-05 A | 4, 28 | 100% |  |  | 童峻涛 |
| 51 | 3.3 | 可行性分析修改 | manual | 1d | 2020-10-30 A | 2020-10-30 A | 34, 35, 46 | 100% |  |  | 陈玲曦 |
| 52 | 3.4 | 用户访谈 | manual | 1d | 2020-11-06 A | 2020-11-06 A | 4, 47, 50, 51 | 100% |  |  | 童峻涛、刘书宇 |
| 53 | 3.5 | 操作流程图制作 | manual | 2d | 2020-11-07 A | 2020-11-10 A | 28, 50, 51, 52 | 100% |  |  | 童峻涛 |
| 54 | 3.6 | 原型图细节制作 | manual | 1d | 2020-11-07 A | 2020-11-07 A | 29, 30 | 100% |  |  | 童峻涛、刘书宇 |
| 55 | 3.7 | 数据流图制作 | manual | 1d | 2020-11-07 A | 2020-11-07 A | 50, 51, 52 | 100% |  |  | 陈玲曦 |
| 56 | 3.8 | 模块分解 | manual | 2d | 2020-11-11 A | 2020-11-12 A | 53, 55 | 100% |  |  | 陈玲曦、刘书宇、童峻涛 |
| 57 | 3.9 | 需求说明ppt制作 | manual | 1d | 2020-11-13 A | 2020-11-13 A | 50, 56 | 100% |  |  | 刘书宇 |

| ID | WBS | Task | Type | Duration | Start | Finish | Predecessors | Complete | Actual start | Actual finish | 负责人 |
| --- | --- | --- | --- | --- | --- | --- | --- | --- | --- | --- | --- |
| 58 | 4 | **形式化说明技术** |  | 8d | 2020-11-12 | 2020-11-19 | 48 | 100% | 2020-11-01 | 2020-11-18 | 陈玲曦、刘书宇、童峻涛 |
| 59 | 4.1 | 需求说明文档的更改 | manual | 3d | 2020-11-14 A | 2020-11-18 A | 50, 57 | 100% |  |  | 童峻涛 |
| 60 | 4.2 | 模块细节分配 |  | 1d | 2020-11-13 A | 2020-11-13 A | 56 | 100% |  |  | 陈玲曦 |
| 61 | 4.3 | **相关模块资料查询以及技术说明** |  | 6d | 2020-11-12 A | 2020-11-17 A | 37 | 100% |  |  | 刘书宇 |
| 62 | 4.3.1 | 前端技术准备及说明第一阶段(基础知识理论) | manual | 3d | 2020-11-12 A | 2020-11-14 A |  | 100% |  |  | 刘书宇 |
| 63 | 4.3.2 | 前端技术准备及说明第二阶段(初步设计构想) | manual | 3d | 2020-11-15 A | 2020-11-17 A |  | 100% |  |  | 刘书宇 |
| 64 | 4.4 | 每周例会，技术分享 | manual | 0.5d | 2020-11-14 A | 2020-11-14 A |  | 100% |  |  | 陈玲曦、刘书宇、童峻涛 |
| 65 | 4.5 | 后端技术准备及说明 | manual | 0.5d | 2020-11-01 A | 2020-11-01 A | 43 | 100% |  |  | 童峻涛 |
| 66 | 4.6 | 页面设计及文档记录 | manual | 0.5d | 2020-11-14 A | 2020-11-14 A | 60, 64 | 100% |  |  | 陈玲曦 |
| 67 | 5 | **总体设计** |  | 8d | 2020-11-23 A | 2020-11-30 A | 58 | 100% |  |  | 陈玲曦、刘书宇、童峻涛 |
| 68 | 5.1 | 之前所有文档的更新 | manual | 3d | 2020-11-23 A | 2020-11-25 A | 28, 47, 50, 66 | 100% |  |  | 陈玲曦 |
| 69 | 5.2 | 对要实现的模块进行技术验证 | manual | 3d | 2020-11-24 A | 2020-11-26 A | 61, 65 | 100% |  |  | 陈玲曦、刘书宇、童峻涛 |
| 70 | 5.3 | 测试计划 | manual | 3d | 2020-11-24 A | 2020-11-26 A |  | 100% |  |  | 陈玲曦 |
| 71 | 5.4 | 数据库设计 | manual | 3d | 2020-11-24 A | 2020-11-26 A |  | 100% |  |  | 刘书宇 |
| 72 | 5.5 | 用户手册编写 | manual | 3d | 2020-11-24 A | 2020-11-26 A |  | 100% |  |  | 陈玲曦 |
| 73 | 5.6 | 总体设计说明书编写 | manual | 3d | 2020-11-26 A | 2020-11-30 A |  | 100% |  |  | 童峻涛 |
| 74 | 5.7 | 每周例会，技术分享 | manual | 0.5d | 2020-11-27 A | 2020-11-27 A |  | 100% |  |  | 陈玲曦、刘书宇、童峻涛 |
| 75 | 6 | **详细设计** |  | 18d | 2020-12-01 A | 2020-12-18 | 67 | 100% |  | 2020-12-10 | 陈玲曦、刘书宇、童峻涛 |
| 76 | 6.1 | IPO图 | manual | 3d | 2020-12-01 A | 2020-12-03 A |  | 100% |  |  | 刘书宇、陈玲曦 |
| 77 | 6.2 | 接口详细定义第一阶段 | manual | 3d | 2020-12-01 A | 2020-12-03 A |  | 100% |  |  | 童峻涛 |
| 78 | 6.3 | 每周例会，技术分享 | manual | 0.5d | 2020-12-01 A | 2020-12-01 A |  | 100% |  |  | 陈玲曦、刘书宇、童峻涛 |
| 79 | 6.4 | 各模块分图设计 | manual | 2d | 2020-12-03 A | 2020-12-04 A |  | 100% |  |  | 刘书宇（用户模块）；陈玲曦（管理员模块）；童峻涛（功能模块） |
| 80 | 6.5 | 分模块伪码设计 | manual | 2d | 2020-12-03 A | 2020-12-04 A |  | 100% |  |  | 刘书宇（用户模块）；陈玲曦（管理员模块）；童峻涛（功能模块） |
| 81 | 6.6 | **整合设计中遇到的问题进行需求更改与用户确认** |  | 5d | 2020-12-03 A | 2020-12-07 A |  | 100% |  |  | 陈玲曦、刘书宇、童峻涛 |
| 82 | 6.6.1 | 需求更改 | manual | 3d | 2020-12-03 A | 2020-12-07 A |  | 100% |  |  | 刘书宇 |
| 83 | 6.6.2 | 用户确认 | manual | 2d | 2020-12-06 A | 2020-12-07 A |  | 100% |  |  | 刘书宇 |
| 84 | 6.7 | 接口详细定义第二阶段 | manual | 3d | 2020-12-04 A | 2020-12-06 A | 77 | 100% |  |  | 童峻涛 |
| 85 | 6.8 | 详细设计ppt | manual | 1d | 2020-12-04 A | 2020-12-04 A |  | 100% |  |  | 童峻涛 |
| 86 | 6.9 | 建立详细设计文档 | manual | 2d | 2020-12-05 A | 2020-12-06 A |  | 100% |  |  | 陈玲曦 |
| 87 | 6.10 | 每周例会，技术分享 | manual | 0.5d | 2020-12-08 A | 2020-12-08 A |  | 100% |  |  | 陈玲曦、刘书宇、童峻涛 |
| 88 | 6.11 | 详细设计修订 | manual | 3d | 2020-12-07 A | 2020-12-09 A | 86 | 100% |  |  | 陈玲曦 |
| 89 | 6.12 | 详细设计ppt修订 | manual | 2d | 2020-12-09 A | 2020-12-10 A | 85, 86 | 100% |  |  | 童峻涛 |
| 90 | 6.13 | 每周例会、技术分享 | manual | 0.5d | 2020-12-10 A | 2020-12-10 A |  | 100% |  |  | 陈玲曦、刘书宇、童峻涛 |

| ID | WBS | Task | Type | Duration | Start | Finish | Predecessors | Complete | Actual finish | 负责人 |
| --- | --- | --- | --- | --- | --- | --- | --- | --- | --- | --- |
| 91 | 7 | **项目实现及测试** |  | 20d | 2020-12-18 A | 2021-01-06 | 75 | 100% | 2020-12-31 | 陈玲曦、刘书宇、童峻涛 |
| 92 | 7.1 | **模块单元测试** |  | 14d | 2020-12-18 A | 2020-12-31 |  | 100% | 2020-12-30 | 陈玲曦、刘书宇、童峻涛 |
| 93 | 7.1.1 | **登陆模块单元测试** |  | 14d | 2020-12-18 A | 2020-12-31 |  | 100% | 2020-12-29 | 陈玲曦 |
| 94 | 7.1.1.1 | 登陆模块单元测试第一阶段(登录) | manual | 3d | 2020-12-18 A | 2020-12-20 A |  | 100% |  | 陈玲曦 |
| 95 | 7.1.1.2 | 登陆模块单元测试第二阶段(注册) | manual | 3d | 2020-12-21 A | 2020-12-23 A |  | 100% |  | 陈玲曦 |
| 96 | 7.1.1.3 | 登陆模块单元测试第三阶段(报错机制) | manual | 3d | 2020-12-25 A | 2020-12-27 A |  | 100% |  | 陈玲曦 |
| 97 | 7.1.1.4 | 登陆模块单元测试第四阶段(信息核对等) | manual | 2d | 2020-12-28 A | 2020-12-29 A |  | 100% |  | 陈玲曦 |
| 98 | 7.1.1.5 | 登陆模块单元测试第五阶段(综合完善等) | manual | 2d | 2020-12-28 A | 2020-12-29 A |  | 100% |  | 陈玲曦 |
| 99 | 7.1.2 | **编辑模块单元测试** |  | 14d | 2020-12-18 A | 2020-12-31 |  | 100% | 2020-12-29 | 刘书宇 |
| 100 | 7.1.2.1 | 编辑模块单元测试第一阶段(写入实现测试) | manual | 3d | 2020-12-18 A | 2020-12-20 A |  | 100% |  | 刘书宇 |
| 101 | 7.1.2.2 | 编辑模块单元测试第二阶段(修改内容测试) | manual | 3d | 2020-12-21 A | 2020-12-23 A |  | 100% |  | 刘书宇 |
| 102 | 7.1.2.3 | 编辑模块单元测试第三阶段(删除内容测试) | manual | 3d | 2020-12-25 A | 2020-12-27 A |  | 100% |  | 刘书宇 |
| 103 | 7.1.2.4 | 编辑模块单元测试第四阶段(内容排版测试) | manual | 2d | 2020-12-28 A | 2020-12-29 A |  | 100% |  | 刘书宇 |
| 104 | 7.1.2.5 | 编辑模块单元测试第五阶段(整体测试) | manual | 2d | 2020-12-28 A | 2020-12-29 A |  | 100% |  | 刘书宇 |
| 105 | 7.1.3 | **远程终端模块单元测试** |  | 13d | 2020-12-18 A | 2020-12-30 |  | 100% | 2020-12-29 | 童峻涛 |
| 106 | 7.1.3.1 | 远程终端模块单元测试(本地调试) | manual | 3d | 2020-12-18 A | 2020-12-20 A |  | 100% |  | 童峻涛 |
| 107 | 7.1.3.2 | 远程终端模块单元测试(服务器查看) | manual | 3d | 2020-12-21 A | 2020-12-23 A |  | 100% |  | 童峻涛 |
| 108 | 7.1.3.3 | 远程终端模块单元测试(反复试验连接与断开) | manual | 3d | 2020-12-25 A | 2020-12-27 A |  | 100% |  | 童峻涛 |
| 109 | 7.1.3.4 | 远程终端模块单元测试(压力预测) | manual | 2d | 2020-12-28 A | 2020-12-29 A |  | 100% |  | 童峻涛 |
| 110 | 7.1.3.5 | 远程终端模块单元测试 | manual | 2d | 2020-12-28 A | 2020-12-29 A |  | 100% |  | 童峻涛 |
| 111 | 7.1.4 | 功能模块单元测试 | manual | 13d | 2020-12-18 A | 2020-12-30 A |  | 100% |  | 刘书宇 |
| 112 | 7.2 | 本周例会、技术分享 | manual | 0.5d | 2020-12-18 A | 2020-12-18 A |  | 100% |  | 陈玲曦、刘书宇、童峻涛 |
| 113 | 7.3 | 代码规范文档 | manual | 2d | 2020-12-19 A | 2020-12-20 A |  | 100% |  | 陈玲曦、刘书宇、童峻涛 |
| 114 | 7.4 | **模块程序设计** |  | 6d | 2020-12-19 A | 2020-12-24 A |  | 100% |  | 陈玲曦、刘书宇、童峻涛 |
| 115 | 7.4.1 | **登陆模块程序设计** |  | 6d | 2020-12-19 A | 2020-12-24 A |  | 100% |  | 童峻涛 |
| 116 | 7.4.1.1 | 登陆模块程序设计第一阶段(信息核对) | manual | 3d | 2020-12-19 A | 2020-12-21 A |  | 100% |  | 童峻涛 |
| 117 | 7.4.1.2 | 登陆模块程序设计第二阶段(错误机制) | manual | 3d | 2020-12-22 A | 2020-12-24 A |  | 100% |  | 童峻涛 |

| ID | WBS | Task | Type | Duration | Start | Finish | Predecessors | Complete | Constraint | 负责人 |
| --- | --- | --- | --- | --- | --- | --- | --- | --- | --- | --- |
| 118 | 7.4.2 | **功能模块程序设计** |  | 6d | 2020-12-19 A | 2020-12-24 A |  | 100% |  | 童峻涛 |
| 119 | 7.4.2.1 | 功能模块程序设计第一阶段(初步实现) | manual | 3d | 2020-12-19 A | 2020-12-21 A |  | 100% |  | 童峻涛 |
| 120 | 7.4.2.2 | 功能模块程序设计第二阶段(完善设计) | manual | 3d | 2020-12-22 A | 2020-12-24 A |  | 100% |  | 童峻涛 |
| 121 | 7.4.3 | **编辑模块程序设计** |  | 6d | 2020-12-19 A | 2020-12-24 A |  | 100% |  | 刘书宇 |
| 122 | 7.4.3.1 | 编辑模块程序设计第一阶段(增删改查) | manual | 3d | 2020-12-19 A | 2020-12-21 A |  | 100% |  | 刘书宇 |
| 123 | 7.4.3.2 | 编辑模块程序设计第二阶段(完善设计) | manual | 3d | 2020-12-22 A | 2020-12-24 A |  | 100% |  | 刘书宇 |
| 124 | 7.4.4 | **动态模块程序设计** |  | 6d | 2020-12-19 A | 2020-12-24 A |  | 100% |  | 陈玲曦 |
| 125 | 7.4.4.1 | 动态模块程序设计第一阶段(本地) | manual | 3d | 2020-12-19 A | 2020-12-21 A |  | 100% |  | 陈玲曦 |
| 126 | 7.4.4.2 | 动态模块程序设计第二阶段(服务器) | manual | 3d | 2020-12-22 A | 2020-12-24 A |  | 100% |  | 陈玲曦 |
| 127 | 7.5 | 本周例会、技术分享 | manual | 0.5d | 2020-12-19 A | 2020-12-19 A |  | 100% |  | 陈玲曦、刘书宇、童峻涛 |
| 128 | 7.6 | 本周例会、技术分享 | manual | 0.5d | 2020-12-24 A | 2020-12-24 A |  | 100% |  | 陈玲曦、刘书宇、童峻涛 |
| 129 | 7.7 | 测试报告等文档编写 | manual | 3d | 2020-12-28 A | 2020-12-30 A |  | 100% |  | 童峻涛 |
| 130 | 7.8 | 用户手册更新和测试文档完善 | manual | 3d | 2020-12-28 A | 2020-12-30 A |  | 100% | start no earlier than 2020-12-28 | 陈玲曦 |
| 131 | 7.9 | 其他文档更新和进度PPT | manual | 3d | 2020-12-28 A | 2020-12-30 A |  | 100% |  | 刘书宇 |
| 132 | 7.10 | 本周例会、技术分享 | manual | 1d | 2020-12-31 A | 2020-12-31 A |  | 100% |  | 陈玲曦、刘书宇、童峻涛 |
| 133 | 8 | **项目维护** |  | 7d | 2021-01-06 | 2021-01-14 | 91 |  |  | 陈玲曦、刘书宇、童峻涛 |
| 134 | 8.1 | **项目维护** |  | 6d | 2021-01-06 | 2021-01-13 |  |  |  | 陈玲曦、刘书宇、童峻涛 |
| 135 | 8.1.1 | 项目维护第一阶段(软件维护尝试) | manual | 3d | 2021-01-06 | 2021-01-08 |  |  |  | 陈玲曦、刘书宇、童峻涛 |
| 136 | 8.1.2 | 项目维护第二阶段(服务器维护尝试) | manual | 3d | 2021-01-09 | 2021-01-12 |  |  |  | 陈玲曦、刘书宇、童峻涛 |
| 137 | 8.2 | **项目测试报告编写** |  | 6d | 2021-01-06 | 2021-01-13 | 134 |  |  | 陈玲曦、刘书宇、童峻涛 |
| 138 | 8.2.1 | 项目测试报告编写 | manual | 3d | 2021-01-06 | 2021-01-08 |  |  |  | 陈玲曦、刘书宇、童峻涛 |
| 139 | 8.2.2 | 项目测试报告编写 | manual | 3d | 2021-01-09 | 2021-01-12 |  |  |  | 陈玲曦、刘书宇、童峻涛 |
| 140 | 8.3 | 每周例会，技术分享 | manual | 0.5d | 2021-01-06 | 2021-01-06 |  |  |  | 陈玲曦、刘书宇、童峻涛 |
| 141 | 9 | **项目总结** |  | 4d | 2021-01-14 | 2021-01-19 | 1, 32, 48, 58, 67, 75, 91, 133 |  |  | 陈玲曦、刘书宇、童峻涛 |
| 142 | 9.1 | 总结文档编写 | manual | 3d | 2021-01-14 | 2021-01-18 |  |  |  | 陈玲曦、刘书宇、童峻涛 |
| 143 | 9.2 | 总结ppt制作 | manual | 1d | 2021-01-18 | 2021-01-18 |  |  |  | 陈玲曦、刘书宇、童峻涛 |
